# diagrama de gantt Castelcardo

Schedule from MS Project, 2019-05-20 to 2019-10-21, costs in $.

## Calendars

- Estándar: Mon-Fri 09:00-13:00, 15:00-19:00; Sat-Sun off. Exceptions (off unless hours are given): 2019-06-24 to 2019-06-28 (semana de receso).

## Resources

| Resource | Rate |
| --- | --- |
| Wendy Dayana Castañeda | 3255 |
| Karen Vanessa Montesdeoca | 3255 |
| Jhonny Sebastian Ricardo | 3255 |
| Edwin Estevan Vanegas | 3255 |

## Schedule

| ID | WBS | Task | Duration | Start | Finish | Predecessors | Total slack | Resources | Work | Cost |
| --- | --- | --- | --- | --- | --- | --- | --- | --- | --- | --- |
| 1 | 1 | **Analisis** | 14.5d | 2019-05-20 09:00 | 2019-06-07 13:00 |  |  |  | 172h | 559,860 |
| 2 | 1.1 | **Componente metodologico** | 4.5d | 2019-05-20 09:00 | 2019-05-24 13:00 |  | 0d |  | 76h | 247,380 |
| 3 | 1.1.1 | nombre del proyecto | 2h | 2019-05-20 09:00 | 2019-05-20 11:00 |  | 0d | Edwin Estevan Vanegas; Jhonny Sebastian Ricardo; Karen Vanessa Montesdeoca; Wendy Dayana Castañeda | 8h | 26,040 |
| 4 | 1.1.2 | objetivo general | 5h | 2019-05-20 11:00 | 2019-05-20 18:00 | 3 | 0d | Karen Vanessa Montesdeoca; Wendy Dayana Castañeda | 10h | 32,550 |
| 5 | 1.1.3 | objetivos especoficos | 5h | 2019-05-20 18:00 | 2019-05-21 13:00 | 4 | 0d | Karen Vanessa Montesdeoca; Wendy Dayana Castañeda | 10h | 32,550 |
| 6 | 1.1.4 | planteamiento del problema | 1d | 2019-05-21 15:00 | 2019-05-22 13:00 | 5 | 0d | Karen Vanessa Montesdeoca; Wendy Dayana Castañeda | 16h | 52,080 |
| 7 | 1.1.5 | alcanse del proyecto | 1d | 2019-05-22 15:00 | 2019-05-23 13:00 | 6 | 0d | Karen Vanessa Montesdeoca; Wendy Dayana Castañeda | 16h | 52,080 |
| 8 | 1.1.6 | justificacion | 1d | 2019-05-23 15:00 | 2019-05-24 13:00 | 7 | 0d | Karen Vanessa Montesdeoca; Wendy Dayana Castañeda | 16h | 52,080 |
| 9 | 1.2 | **levantamiento de informacion** | 10d | 2019-05-24 15:00 | 2019-06-07 13:00 | 2 | 0d |  | 96h | 312,480 |
| 10 | 1.2.1 | entrevista | 7d | 2019-05-24 15:00 | 2019-06-04 13:00 |  | 0d | Wendy Dayana Castañeda | 56h | 182,280 |
| 11 | 1.2.2 | obcervacion | 1d | 2019-06-04 15:00 | 2019-06-05 13:00 | 10 | 0d | Wendy Dayana Castañeda | 8h | 26,040 |
| 12 | 1.2.3 | encuesta | 2d | 2019-06-05 15:00 | 2019-06-07 13:00 | 11 | 0d | Edwin Estevan Vanegas; Jhonny Sebastian Ricardo | 32h | 104,160 |
| 13 | 2 | **Planeacion** | 28.88d | 2019-06-07 15:00 | 2019-07-25 12:00 | 1 | 0d |  | 598h | 1,946,490 |
| 14 | 2.1 | **informe de requerimiento IEEE 830** | 5.75d | 2019-06-07 15:00 | 2019-06-17 11:00 |  | 0d |  | 92h | 299,460 |
| 15 | 2.1.1 | **requerimientos funcionales** | 1.75d | 2019-06-07 15:00 | 2019-06-11 11:00 |  | 0d |  | 28h | 91,140 |
| 16 | 2.1.1.1 | registro de usuario | 2h | 2019-06-07 15:00 | 2019-06-07 17:00 |  | 0d | Karen Vanessa Montesdeoca; Wendy Dayana Castañeda | 4h | 13,020 |
| 17 | 2.1.1.2 | inicio de sistema | 2h | 2019-06-07 17:00 | 2019-06-07 19:00 | 16 | 0d | Karen Vanessa Montesdeoca; Wendy Dayana Castañeda | 4h | 13,020 |
| 18 | 2.1.1.3 | gestion calificacion de usuario | 2h | 2019-06-10 09:00 | 2019-06-10 11:00 | 17 | 0d | Karen Vanessa Montesdeoca; Wendy Dayana Castañeda | 4h | 13,020 |
| 19 | 2.1.1.4 | adjuntar comentarios | 2h | 2019-06-10 11:00 | 2019-06-10 13:00 | 18 | 0d | Karen Vanessa Montesdeoca; Wendy Dayana Castañeda | 4h | 13,020 |
| 20 | 2.1.1.5 | gestion de calificacion | 2h | 2019-06-10 15:00 | 2019-06-10 17:00 | 19 | 0d | Karen Vanessa Montesdeoca; Wendy Dayana Castañeda | 4h | 13,020 |
| 21 | 2.1.1.6 | actualizacion de menu de productos | 2h | 2019-06-10 17:00 | 2019-06-10 19:00 | 20 | 0d | Karen Vanessa Montesdeoca; Wendy Dayana Castañeda | 4h | 13,020 |
| 22 | 2.1.1.7 | gestion de peticiones | 2h | 2019-06-11 09:00 | 2019-06-11 11:00 | 21 | 0d | Karen Vanessa Montesdeoca; Wendy Dayana Castañeda | 4h | 13,020 |
| 23 | 2.1.2 | **requerimientos no funcionales** | 0.75d | 2019-06-11 11:00 | 2019-06-11 19:00 | 15 | 0d |  | 12h | 39,060 |
| 24 | 2.1.2.1 | accesibilidad del usuario | 2h | 2019-06-11 11:00 | 2019-06-11 13:00 |  | 0d | Karen Vanessa Montesdeoca; Wendy Dayana Castañeda | 4h | 13,020 |
| 25 | 2.1.2.2 | buena cumunicacion entre el sistema y el usuario | 2h | 2019-06-11 15:00 | 2019-06-11 17:00 | 24 | 0d | Karen Vanessa Montesdeoca; Wendy Dayana Castañeda | 4h | 13,020 |
| 26 | 2.1.2.3 | actualizacion de datos para el usuario | 2h | 2019-06-11 17:00 | 2019-06-11 19:00 | 25 | 0d | Karen Vanessa Montesdeoca; Wendy Dayana Castañeda | 4h | 13,020 |
| 27 | 2.1.3 | Diagra de caso de uso | 2h | 2019-06-12 09:00 | 2019-06-12 11:00 | 23 | 0d | Edwin Estevan Vanegas; Jhonny Sebastian Ricardo | 4h | 13,020 |
| 28 | 2.1.4 | Casos de usos extendidos | 3d | 2019-06-12 11:00 | 2019-06-17 11:00 | 27 | 0d | Edwin Estevan Vanegas; Jhonny Sebastian Ricardo | 48h | 156,240 |

| ID | WBS | Task | Duration | Start | Finish | Predecessors | Total slack | Resources | Work | Cost |
| --- | --- | --- | --- | --- | --- | --- | --- | --- | --- | --- |
| 29 | 2.2 | **mapas de procesos** | 5d | 2019-06-17 11:00 | 2019-07-01 11:00 | 14 | 0d |  | 40h | 130,200 |
| 30 | 2.2.1 | BPMN | 3d | 2019-06-17 11:00 | 2019-06-20 11:00 |  | 0d | Karen Vanessa Montesdeoca | 24h | 78,120 |
| 31 | 2.2.2 | diagrama de fulujos de proceso | 2d | 2019-06-20 11:00 | 2019-07-01 11:00 | 30 | 0d | Karen Vanessa Montesdeoca | 16h | 52,080 |
| 32 | 2.3 | **modelo entidad relacion** | 4.12d | 2019-07-01 11:00 | 2019-07-05 12:00 | 29 | 0d |  | 66h | 214,830 |
| 33 | 2.3.1 | Modelo relacional | 2d | 2019-07-01 11:00 | 2019-07-03 11:00 |  | 0d | Karen Vanessa Montesdeoca; Wendy Dayana Castañeda | 32h | 104,160 |
| 34 | 2.3.2 | Normalizacion de base de datos | 2d | 2019-07-03 11:00 | 2019-07-05 11:00 | 33 | 0d | Jhonny Sebastian Ricardo; Edwin Estevan Vanegas | 32h | 104,160 |
| 35 | 2.3.3 | Diccionario de datos | 1h | 2019-07-05 11:00 | 2019-07-05 12:00 | 34 | 0d | Karen Vanessa Montesdeoca; Wendy Dayana Castañeda | 2h | 6,510 |
| 36 | 2.4 | **Modelo logico** | 2d | 2019-07-05 12:00 | 2019-07-09 12:00 | 32 | 0d |  | 32h | 104,160 |
| 37 | 2.4.1 | Diagrama de clases | 2d | 2019-07-05 12:00 | 2019-07-09 12:00 |  | 0d | Karen Vanessa Montesdeoca; Wendy Dayana Castañeda | 32h | 104,160 |
| 38 | 2.5 | **Prototipos no funcional del sistema** | 11d | 2019-07-09 12:00 | 2019-07-24 12:00 | 36 | 0d |  | 352h | 1,145,760 |
| 39 | 2.5.1 | Mockups de la aplicación | 11d | 2019-07-09 12:00 | 2019-07-24 12:00 |  | 0d | Edwin Estevan Vanegas; Jhonny Sebastian Ricardo; Karen Vanessa Montesdeoca; Wendy Dayana Castañeda | 352h | 1,145,760 |
| 40 | 2.6 | **Diagra de distribicion** | 1d | 2019-07-24 12:00 | 2019-07-25 12:00 | 38 | 0d |  | 16h | 52,080 |
| 41 | 2.6.1 | Diagrama de distribucion | 1d | 2019-07-24 12:00 | 2019-07-25 12:00 |  | 0d | Karen Vanessa Montesdeoca; Wendy Dayana Castañeda | 16h | 52,080 |
| 42 | 3 | **Ejecucion** | 33.5d | 2019-07-25 12:00 | 2019-09-10 18:00 | 13 | 0d |  | 840h | 2,734,200 |
| 43 | 3.1 | **bases de datos** | 13d | 2019-07-25 12:00 | 2019-08-13 12:00 |  | 0d |  | 352h | 1,145,760 |
| 44 | 3.1.1 | construccion de base de datos | 1d | 2019-07-25 12:00 | 2019-07-26 12:00 |  | 0d | Jhonny Sebastian Ricardo | 8h | 26,040 |
| 45 | 3.1.2 | datos insertados en la base de datos | 1d | 2019-07-26 12:00 | 2019-07-29 12:00 | 44 | 0d | Jhonny Sebastian Ricardo | 8h | 26,040 |
| 46 | 3.1.3 | Consultas y Joins en la Base de Datos | 1d | 2019-07-29 12:00 | 2019-07-30 12:00 | 45 | 0d | Edwin Estevan Vanegas; Jhonny Sebastian Ricardo | 16h | 52,080 |
| 47 | 3.1.4 | **Iterfaz grafica de usuario** | 10d | 2019-07-30 12:00 | 2019-08-13 12:00 | 46 | 0d |  | 320h | 1,041,600 |
| 48 | 3.1.4.1 | Maquetacion de la aplicación (HTML) | 5d | 2019-07-30 12:00 | 2019-08-06 12:00 |  | 0d | Edwin Estevan Vanegas; Jhonny Sebastian Ricardo; Karen Vanessa Montesdeoca; Wendy Dayana Castañeda | 160h | 520,800 |
| 49 | 3.1.4.2 | Implementacion de estilos | 5d | 2019-08-06 12:00 | 2019-08-13 12:00 | 48 | 0d | Edwin Estevan Vanegas; Jhonny Sebastian Ricardo; Karen Vanessa Montesdeoca; Wendy Dayana Castañeda | 160h | 520,800 |
| 50 | 3.2 | **codificacion y manejo de CRUD** | 20.5d | 2019-08-13 12:00 | 2019-09-10 18:00 | 43 | 0d |  | 488h | 1,588,440 |
| 51 | 3.2.1 | conexión base de datos | 5d | 2019-08-13 12:00 | 2019-08-20 12:00 |  | 0d | Edwin Estevan Vanegas; Jhonny Sebastian Ricardo; Karen Vanessa Montesdeoca; Wendy Dayana Castañeda | 160h | 520,800 |
| 52 | 3.2.2 | Crud funcional modulos del sistema | 5d | 2019-08-20 12:00 | 2019-08-27 12:00 | 51 | 0d | Edwin Estevan Vanegas; Jhonny Sebastian Ricardo; Karen Vanessa Montesdeoca; Wendy Dayana Castañeda | 160h | 520,800 |
| 53 | 3.2.3 | Registrar usuarios | 3h | 2019-08-27 12:00 | 2019-08-27 17:00 | 52 | 0d | Edwin Estevan Vanegas; Jhonny Sebastian Ricardo | 6h | 19,530 |
| 54 | 3.2.4 | Registrar empleados | 3h | 2019-08-27 17:00 | 2019-08-28 10:00 | 53 | 0d | Edwin Estevan Vanegas; Jhonny Sebastian Ricardo | 6h | 19,530 |
| 55 | 3.2.5 | Iniciar sesion | 3h | 2019-08-28 10:00 | 2019-08-28 13:00 | 54 | 0d | Edwin Estevan Vanegas; Jhonny Sebastian Ricardo | 6h | 19,530 |
| 56 | 3.2.6 | Cerrar sesion | 3h | 2019-08-28 15:00 | 2019-08-28 18:00 | 55 | 0d | Edwin Estevan Vanegas; Jhonny Sebastian Ricardo | 6h | 19,530 |
| 57 | 3.2.7 | Consultar usuarios | 3h | 2019-08-28 18:00 | 2019-08-29 11:00 | 56 | 0d | Edwin Estevan Vanegas; Jhonny Sebastian Ricardo | 6h | 19,530 |
| 58 | 3.2.8 | Actualizar informacion de usuario | 3h | 2019-08-29 11:00 | 2019-08-29 16:00 | 57 | 0d | Edwin Estevan Vanegas; Jhonny Sebastian Ricardo | 6h | 19,530 |
| 59 | 3.2.9 | Recuperar cuenta | 3h | 2019-08-29 16:00 | 2019-08-29 19:00 | 58 | 0d | Edwin Estevan Vanegas; Jhonny Sebastian Ricardo | 6h | 19,530 |
| 60 | 3.2.10 | Inhabilitar cuenta | 3h | 2019-08-30 09:00 | 2019-08-30 12:00 | 59 | 0d | Edwin Estevan Vanegas; Jhonny Sebastian Ricardo | 6h | 19,530 |
| 61 | 3.2.11 | Calificar productos | 3h | 2019-08-30 12:00 | 2019-08-30 17:00 | 60 | 0d | Edwin Estevan Vanegas; Jhonny Sebastian Ricardo | 6h | 19,530 |
| 62 | 3.2.12 | Calificar atencion al cliente | 3h | 2019-08-30 17:00 | 2019-09-02 10:00 | 61 | 0d | Edwin Estevan Vanegas; Jhonny Sebastian Ricardo | 6h | 19,530 |
| 63 | 3.2.13 | Ingresar comentario | 3h | 2019-09-02 10:00 | 2019-09-02 13:00 | 62 | 0d | Edwin Estevan Vanegas; Jhonny Sebastian Ricardo | 6h | 19,530 |
| 64 | 3.2.14 | Consultar calificacion | 3h | 2019-09-02 15:00 | 2019-09-02 18:00 | 63 | 0d | Edwin Estevan Vanegas; Jhonny Sebastian Ricardo | 6h | 19,530 |
| 65 | 3.2.15 | Generar reporte de calificacion | 3h | 2019-09-02 18:00 | 2019-09-03 11:00 | 64 | 0d | Edwin Estevan Vanegas; Jhonny Sebastian Ricardo | 6h | 19,530 |
| 66 | 3.2.16 | Enviar promociones | 3h | 2019-09-03 11:00 | 2019-09-03 16:00 | 65 | 0d | Edwin Estevan Vanegas; Jhonny Sebastian Ricardo | 6h | 19,530 |
| 67 | 3.2.17 | Enviar nuevos productos | 3h | 2019-09-03 16:00 | 2019-09-03 19:00 | 66 | 0d | Edwin Estevan Vanegas; Jhonny Sebastian Ricardo | 6h | 19,530 |
| 68 | 3.2.18 | Registrar promociones | 3h | 2019-09-04 09:00 | 2019-09-04 12:00 | 67 | 0d | Edwin Estevan Vanegas; Jhonny Sebastian Ricardo | 6h | 19,530 |
| 69 | 3.2.19 | Desactivar envio de promociones | 3h | 2019-09-04 12:00 | 2019-09-04 17:00 | 68 | 0d | Edwin Estevan Vanegas; Jhonny Sebastian Ricardo | 6h | 19,530 |
| 70 | 3.2.20 | Actualizar promociones | 3h | 2019-09-04 17:00 | 2019-09-05 10:00 | 69 | 0d | Edwin Estevan Vanegas; Jhonny Sebastian Ricardo | 6h | 19,530 |
| 71 | 3.2.21 | Consultar promociones enviadas | 3h | 2019-09-05 10:00 | 2019-09-05 13:00 | 70 | 0d | Edwin Estevan Vanegas; Jhonny Sebastian Ricardo | 6h | 19,530 |
| 72 | 3.2.22 | Crear carta | 3h | 2019-09-05 15:00 | 2019-09-05 18:00 | 71 | 0d | Edwin Estevan Vanegas; Jhonny Sebastian Ricardo | 6h | 19,530 |
| 73 | 3.2.23 | Consultar carta | 3h | 2019-09-05 18:00 | 2019-09-06 11:00 | 72 | 0d | Edwin Estevan Vanegas; Jhonny Sebastian Ricardo | 6h | 19,530 |
| 74 | 3.2.24 | Actualizar carta | 3h | 2019-09-06 11:00 | 2019-09-06 16:00 | 73 | 0d | Edwin Estevan Vanegas; Jhonny Sebastian Ricardo | 6h | 19,530 |
| 75 | 3.2.25 | Consultar promociones enviadas | 3h | 2019-09-06 16:00 | 2019-09-06 19:00 | 74 | 0d | Jhonny Sebastian Ricardo; Edwin Estevan Vanegas | 6h | 19,530 |
| 76 | 3.2.26 | Actualizar imágenes de la carta | 3h | 2019-09-09 09:00 | 2019-09-09 12:00 | 75 | 0d | Edwin Estevan Vanegas; Jhonny Sebastian Ricardo | 6h | 19,530 |
| 77 | 3.2.27 | Crear reservacion | 3h | 2019-09-09 12:00 | 2019-09-09 17:00 | 76 | 0d | Edwin Estevan Vanegas; Jhonny Sebastian Ricardo | 6h | 19,530 |
| 78 | 3.2.28 | Consultar reservacion | 3h | 2019-09-09 17:00 | 2019-09-10 10:00 | 77 | 0d | Edwin Estevan Vanegas; Jhonny Sebastian Ricardo | 6h | 19,530 |
| 79 | 3.2.29 | Cancelar reservacion | 3h | 2019-09-10 10:00 | 2019-09-10 13:00 | 78 | 0d | Edwin Estevan Vanegas; Jhonny Sebastian Ricardo | 6h | 19,530 |
| 80 | 3.2.30 | Reprogramar reservacion | 3h | 2019-09-10 15:00 | 2019-09-10 18:00 | 79 | 0d | Edwin Estevan Vanegas; Jhonny Sebastian Ricardo | 6h | 19,530 |

| ID | WBS | Task | Duration | Start | Finish | Predecessors | Total slack | Resources | Work | Cost |
| --- | --- | --- | --- | --- | --- | --- | --- | --- | --- | --- |
| 81 | 4 | **Evaluacion** | 29d | 2019-09-10 18:00 | 2019-10-21 18:00 | 42 | 0d |  | 928h | 3,020,640 |
| 82 | 4.1 | **Modelo de calidad** | 20d | 2019-09-10 18:00 | 2019-10-08 18:00 |  | 0d |  | 640h | 2,083,200 |
| 83 | 4.1.1 | Gestion de pruebas | 1mo | 2019-09-10 18:00 | 2019-10-08 18:00 |  | 0d | Edwin Estevan Vanegas; Jhonny Sebastian Ricardo; Karen Vanessa Montesdeoca; Wendy Dayana Castañeda | 640h | 2,083,200 |
| 84 | 4.2 | **Construccion de mauales** | 9d | 2019-10-08 18:00 | 2019-10-21 18:00 | 82 | 0d |  | 288h | 937,440 |
| 85 | 4.2.1 | Manual de usuario | 7d | 2019-10-08 18:00 | 2019-10-17 18:00 |  | 0d | Edwin Estevan Vanegas; Jhonny Sebastian Ricardo; Karen Vanessa Montesdeoca; Wendy Dayana Castañeda | 224h | 729,120 |
| 86 | 4.2.2 | Manual de instalacion | 2d | 2019-10-17 18:00 | 2019-10-21 18:00 | 85 | 0d | Edwin Estevan Vanegas; Jhonny Sebastian Ricardo; Karen Vanessa Montesdeoca; Wendy Dayana Castañeda | 64h | 208,320 |
